# HighLevelTaskPlan-ISO_Datatype2

Schedule from MS Project, 2010-02-18 to 2010-05-21, A marks actual dates.
Personal

## Calendars

- Standard: Mon-Fri 08:00-12:00, 13:00-17:00; Sat-Sun off.

## Resources

| Resource |
| --- |
| SDK |
| caGrid |
| caAdapter |
| QA |
| 2 |
| 8 |
| 9 |
| 14 |
| 15FS-5 days |
| 6 |
| 20 |
| 16 |
| 21 |
| 24 |
| 29 |
| 31 |
| 32 |
| 37 |
| 38 |
| 39 |
| 40 |
| 10 |
| 42 |
| 45 |
| 46 |
| 47 |
| 44 |
| 49 |
| 25 |
| 54SS-5 days |
| 58 |
| 54 |
| 62 |
| 63 |
| 70 |
| 59 |
| 64 |

## Schedule

| ID | WBS | Task | Type | Duration | Start | Finish | Predecessors | Complete | Remaining | Total slack | Free slack | Constraint | Resources | Work | Actual work |
| --- | --- | --- | --- | --- | --- | --- | --- | --- | --- | --- | --- | --- | --- | --- | --- |
| 1 | 1 | **ISO Datatype support** |  | 67d | 2010-02-18 A | 2010-05-21 |  | 50% | 33.39d | 0d |  |  |  | 3556h | 1434.4h |
| 2 | 1.1 | Kickoff |  | 1d | 2010-03-01 | 2010-03-01 |  |  |  | 59d |  | start no earlier than 2010-03-01 |  |  |  |
| 4 | 1.2 | **Implementation** |  | 20d | 2010-03-02 A | 2010-03-29 |  | 75% | 5d | 39d |  |  |  | 480h | 360h |
| 5 | 1.2.1 | ISO 21090 Library |  | 20d | 2010-03-02 A | 2010-03-29 |  | 75% | 5d | 39d |  | start no earlier than 2010-03-02 |  |  |  |
| 6 | 1.2.2 | Analyze COPPA Localized library |  | 5d | 2010-03-02 A | 2010-03-08 A | 2 | 100% |  |  |  | start no earlier than 2010-03-02 | SDK; caGrid | 80h | 80h |
| 7 | 1.2.3 | Analyze COPPA serialization framework |  | 5d | 2010-03-02 A | 2010-03-08 A | 2 | 100% |  |  |  | start no earlier than 2010-03-02 | SDK; caGrid | 80h | 80h |
| 8 | 1.2.4 | Analyze COPPA OR Mapping framework |  | 5d | 2010-03-02 A | 2010-03-08 A | 2 | 100% |  |  |  | start no earlier than 2010-03-02 | SDK; caGrid | 80h | 80h |
| 9 | 1.2.5 | Implement enhancements in datatype library |  | 15d | 2010-03-09 A | 2010-03-29 | 8 | 50% | 7.5d | 39d | 0d | start no earlier than 2010-03-09 | SDK; caGrid | 240h | 120h |
| 10 | 1.2.6 | Baseline library code | milestone | 0d | 2010-03-29 | 2010-03-29 | 9 |  |  | 39d |  | start no earlier than 2010-03-29 |  |  |  |
| 12 | 1.3 | **SDK Enhancements** |  | 48d | 2010-02-18 A | 2010-04-26 |  | 58% | 20.03d | 19d |  |  |  | 1064h | 620h |
| 13 | 1.3.1 | Document short term and long term goals for the SDK |  | 10d | 2010-02-18 A | 2010-03-03 A |  | 100% |  |  |  | start no earlier than 2010-02-18 | SDK | 80h | 80h |
| 14 | 1.3.2 | Create design document for tag value specification |  | 10d | 2010-03-09 A | 2010-03-22 A | 8 | 100% |  |  |  | start no earlier than 2010-03-09 | SDK | 80h | 80h |
| 15 | 1.3.3 | Create design document for Hibernate mapping |  | 15d | 2010-03-09 A | 2010-03-29 | 8 | 90% | 1.5d | 39d | 0d | start no earlier than 2010-03-09 | SDK | 120h | 108h |
| 16 | 1.3.4 | Develop JAXB based serialization framework |  | 15d | 2010-03-09 A | 2010-03-29 A | 8 | 100% |  |  |  | start no earlier than 2010-03-09 | SDK | 120h | 120h |
| 17 | 1.3.5 | Create Test UML model |  | 5d | 2010-03-23 A | 2010-03-29 | 14 | 80% | 1d | 39d |  | start no earlier than 2010-03-23 | SDK | 40h | 32h |
| 18 | 1.3.6 | Enhance SDK Java code generator for the ISO data types |  | 5d | 2010-03-23 A | 2010-03-29 | 15FS-5d | 80% | 1d | 39d |  | start no earlier than 2010-03-23 | SDK | 40h | 32h |
| 19 | 1.3.7 | Enhance SDK ORM module for ISO data types |  | 10d | 2010-03-23 A | 2010-04-05 | 15FS-5d | 80% | 2d | 34d |  | start no earlier than 2010-03-23 | SDK | 80h | 64h |
| 20 | 1.3.8 | Enhance SDK service layer to support ISO data types |  | 15d | 2010-03-09 A | 2010-03-29 | 6 | 60% | 6d | 0d |  | start no earlier than 2010-03-09 | SDK | 120h | 72h |
| 21 | 1.3.9 | Integrate ISO 21090 library in JAXB serialization |  | 8d | 2010-03-30 A | 2010-04-08 | 20, 16 | 50% | 4d | 26d | 0d | start no earlier than 2010-03-30 | SDK | 64h | 32h |
| 22 | 1.3.10 | Enhance SDK proxy framework for ISO data types |  | 5d | 2010-04-09 | 2010-04-15 | 21 |  |  | 26d |  | start no earlier than 2010-04-09 | SDK | 40h |  |
| 23 | 1.3.11 | Enhance SDK RESTful query translator for ISO data types |  | 15d | 2010-03-30 | 2010-04-19 | 20 |  |  | 24d |  | start no earlier than 2010-03-30 | SDK | 120h |  |
| 24 | 1.3.12 | Enhance BDA scripts for packaging and deployment |  | 15d | 2010-03-30 | 2010-04-19 | 6, 20 |  |  | 0d |  | start no earlier than 2010-03-30 | SDK | 120h |  |
| 25 | 1.3.13 | Unit test and defect fix |  | 5d | 2010-04-20 | 2010-04-26 | 24 |  |  | 0d |  | start no earlier than 2010-04-20 | SDK | 40h |  |
| 27 | 1.4 | **caAdapter Enhancements** |  | 37d | 2010-03-02 A | 2010-04-21 |  | 60% | 14.89d | 22d |  |  |  | 336h | 200.8h |
| 28 | 1.4.1 | Document the short and long term scope of the caAdapter efforts |  | 5d | 2010-03-02 A | 2010-03-08 A | 2 | 100% |  |  |  | start no earlier than 2010-03-02 | caAdapter | 40h | 40h |
| 29 | 1.4.2 | Enhance caAdapter to load ISO 21090 information |  | 10d | 2010-03-09 A | 2010-03-22 A | 28 | 100% |  |  |  | start no earlier than 2010-03-09 | caAdapter | 80h | 80h |
| 30 | 1.4.3 | Create template model |  | 5d | 2010-03-16 A | 2010-03-22 A | 28 | 100% |  |  |  | start no earlier than 2010-03-16 | caAdapter | 40h | 40h |
| 31 | 1.4.4 | Enhance caAdapter Model Mapping Service |  | 17d | 2010-03-23 A | 2010-04-14 | 30 | 30% | 11.9d | 22d | 0d | start no earlier than 2010-03-23 | caAdapter | 136h | 40.8h |
| 32 | 1.4.5 | Unit test and defect fix |  | 5d | 2010-04-15 | 2010-04-21 | 31 |  |  | 22d | 0d | start no earlier than 2010-04-15 | caAdapter | 40h |  |
| 33 | 1.4.6 | Deliver baseline caAdapter | milestone | 0d | 2010-04-21 | 2010-04-21 | 32 |  |  | 22d |  | start no earlier than 2010-02-18 |  |  |  |

| ID | WBS | Task | Type | Duration | Start | Finish | Predecessors | Complete | Remaining | Total slack | Free slack | Constraint | Resources | Work | Actual work |
| --- | --- | --- | --- | --- | --- | --- | --- | --- | --- | --- | --- | --- | --- | --- | --- |
| 35 | 1.5 | **caGrid Enhancements** |  | 37d | 2010-03-02 A | 2010-04-21 |  | 67% | 12.31d | 22d |  |  |  | 380h | 253.6h |
| 36 | 1.5.1 | Document the short and long term scope of the caGrid efforts |  | 5d | 2010-03-02 A | 2010-03-08 A | 2 | 100% |  |  |  | start no earlier than 2010-03-02 | caGrid | 40h | 40h |
| 37 | 1.5.2 | Create design document for ISO Introduce Extension |  | 4d | 2010-03-09 A | 2010-03-12 A | 36 | 100% |  |  |  | start no earlier than 2010-03-09 | caGrid | 32h | 32h |
| 38 | 1.5.3 | Create Introduce data types extension for adding ISODatatypes to a service |  | 5d | 2010-03-15 A | 2010-03-19 A | 37 | 100% |  |  |  | start no earlier than 2010-03-15 | caGrid | 40h | 40h |
| 39 | 1.5.4 | Create Service Development Process Documentation for ISO datatypes |  | 2d | 2010-03-22 A | 2010-03-23 | 38 | 60% | 0.8d | 43d |  | start no earlier than 2010-03-22 | caGrid | 16h | 9.6h |
| 40 | 1.5.5 | Develop UI component for Introduce data types extension for adding ISODatatypes to a service |  | 2d | 2010-03-24 A | 2010-03-25 A | 39 | 100% |  |  |  | start no earlier than 2010-03-24 | caGrid | 16h | 16h |
| 41 | 1.5.6 | Review SDK database/usertype approach |  | 2d | 2010-03-30 A | 2010-03-31 A | 10 | 100% |  |  |  | start no earlier than 2010-03-30 | caGrid | 16h | 16h |
| 42 | 1.5.7 | Design CQL to HQL general approach for SDK managed ISO datatypes |  | 10d | 2010-04-01 A | 2010-04-14 A | 41 | 100% |  |  |  | start no earlier than 2010-04-01 | caGrid | 80h | 80h |
| 43 | 1.5.8 | Prototype SDK/caGrid query exchange |  | 10d | 2010-04-01 A | 2010-04-14 | 41 | 25% | 7.5d | 22d | 0d | start no earlier than 2010-04-01 | caGrid | 80h | 20h |
| 44 | 1.5.9 | Make ISO client libraries available via download (e.g. any specialized data service client libraries, etc) |  | 0.5d | 2010-04-01 | 2010-04-01 | 41 |  |  | 30.5d | 0d | start no earlier than 2010-04-01 | caGrid | 4h |  |
| 45 | 1.5.10 | Upload ISO datatype extension to Introduce Update Site |  | 0.5d | 2010-04-01 | 2010-04-01 | 44 |  |  | 30.5d | 0d | start no earlier than 2010-04-01 | caGrid | 4h |  |
| 46 | 1.5.11 | Upload ISO datatype data service extension/style to Introduce Update Site |  | 0.5d | 2010-04-02 | 2010-04-02 | 45 |  |  | 30.5d | 0d | start no earlier than 2010-04-02 | caGrid | 4h |  |
| 47 | 1.5.12 | Ivyify retrieval of dependency on common project |  | 1d | 2010-04-02 | 2010-04-05 | 46 |  |  | 34.5d |  | start no earlier than 2010-04-02 | caGrid | 8h |  |
| 48 | 1.5.13 | Unit test and defect fix |  | 5d | 2010-04-15 | 2010-04-21 | 46, 43 |  |  | 22d | 0d | start no earlier than 2010-04-15 | caGrid | 40h |  |
| 49 | 1.5.14 | Deliver baseline caGrid components | milestone | 0d | 2010-04-21 | 2010-04-21 | 48 |  |  | 22d |  | start no earlier than 2010-04-21 | caGrid |  |  |
| 51 | 1.6 | **SDK/caGrid Integration** |  | 5d | 2010-04-27 | 2010-05-03 |  |  |  | 0d |  |  |  | 80h |  |
| 52 | 1.6.1 | Perform SDK and caGrid Integration |  | 5d | 2010-04-27 | 2010-05-03 | 25 |  |  | 0d |  | start no earlier than 2010-04-27 | SDK; caGrid | 80h |  |
| 54 | 1.7 | **QA Testing** |  | 20d | 2010-04-20 | 2010-05-17 |  |  |  | 0d |  |  |  | 320h |  |
| 55 | 1.7.1 | Prepare test plan |  | 10d | 2010-04-20 | 2010-05-03 | 52SS-5d |  |  | 0d |  | start no earlier than 2010-04-20 | QA; SDK; caGrid | 240h |  |
| 56 | 1.7.2 | Execute test cases |  | 10d | 2010-05-04 | 2010-05-17 | 55, 52 |  |  | 0d |  | start no earlier than 2010-05-04 | QA | 80h |  |
| 58 | 1.8 | **User Documentation** |  | 10d | 2010-05-04 | 2010-05-17 |  |  |  | 0d |  |  |  | 800h |  |
| 59 | 1.8.1 | Prepare user guide |  | 10d | 2010-05-04 | 2010-05-17 | 52 |  |  | 0d |  | start no earlier than 2010-05-04 | SDK; caGrid; caAdapter | 240h |  |
| 60 | 1.8.2 | Prepare installation guide |  | 10d | 2010-05-04 | 2010-05-17 | 52 |  |  | 0d |  | start no earlier than 2010-05-04 | SDK; caGrid; caAdapter | 240h |  |
| 61 | 1.8.3 | Deliver installation and user guide | milestone | 0d | 2010-05-17 | 2010-05-17 | 59, 60 |  |  | 0d |  | start no earlier than 2010-05-17 |  |  |  |
| 62 | 1.8.4 | Prepare developers guide for service developers with ISO 21090 datatypes |  | 10d | 2010-05-04 | 2010-05-17 | 52 |  |  | 4d |  | start no earlier than 2010-05-04 | SDK; caGrid; caAdapter | 240h |  |
| 63 | 1.8.5 | Develop developer guide documentation for data type extension |  | 10d | 2010-05-04 | 2010-05-17 | 52 |  |  | 4d |  | start no earlier than 2010-05-04 | caGrid | 80h |  |

| ID | WBS | Task | Duration | Start | Finish | Predecessors | Total slack | Constraint | Resources | Work |
| --- | --- | --- | --- | --- | --- | --- | --- | --- | --- | --- |
| 65 | 1.9 | **Transition** | 4d | 2010-05-18 | 2010-05-21 |  | 0d |  |  | 96h |
| 66 | 1.9.1 | Prepare release notes, zope sites | 2d | 2010-05-18 | 2010-05-19 | 56, 61 | 0d | start no earlier than 2010-05-18 | SDK; caGrid; caAdapter | 48h |
| 67 | 1.9.2 | Upload artifacts on the public sites | 2d | 2010-05-20 | 2010-05-21 | 66 | 0d | start no earlier than 2010-05-20 | SDK; caGrid; caAdapter | 48h |
